# 2023%20Projects

Schedule from MS Project, 2023-01-02 to 2023-12-31, A marks actual dates.

## Calendars

- Standard: Mon-Fri 08:00-12:00, 13:00-17:00; Sat-Sun off. Exceptions (off unless hours are given): 2023-01-15 08:00-12:00, 13:00-17:00, 2023-01-29 08:00-12:00, 13:00-17:00, 2023-02-26 08:00-12:00, 13:00-17:00, 2023-03-05 08:00-12:00, 13:00-17:00, 2023-03-12 08:00-12:00, 13:00-17:00, 2023-03-19 08:00-12:00, 13:00-17:00, 2023-03-26 08:00-12:00, 13:00-17:00, 2023-04-02 08:00-12:00, 13:00-17:00, 2023-04-09 08:00-12:00, 13:00-17:00, 2023-04-16 08:00-12:00, 13:00-17:00, 2023-04-23 08:00-12:00, 13:00-17:00, 2023-04-30 08:00-12:00, 13:00-17:00, 2023-05-07 08:00-12:00, 13:00-17:00, 2023-05-14 08:00-12:00, 13:00-17:00, 2023-05-21 08:00-12:00, 13:00-17:00, 2023-05-28 08:00-12:00, 13:00-17:00, 2023-06-04 08:00-12:00, 13:00-17:00, 2023-07-02 08:00-12:00, 13:00-17:00, 2023-08-06 08:00-12:00, 13:00-17:00, 2023-09-03 08:00-12:00, 13:00-17:00, 2023-10-01 08:00-12:00, 13:00-17:00, 2023-12-31 08:00-12:00, 13:00-17:00.

## Resources

| Resource |
| --- |
| Nagendra Seetharam |
| Rashed Waqar |
| Sreejith Krishnan |
| Tafsir |
| Ervin Brosas |
| Antony |

## Schedule

| ID | WBS | Task | Duration | Start | Finish | Predecessors | Complete | Remaining | Total slack | Free slack | Constraint | Resources | Work | Actual work | Department | Helpdesk# | Text21 |
| --- | --- | --- | --- | --- | --- | --- | --- | --- | --- | --- | --- | --- | --- | --- | --- | --- | --- |
| 1 | 1 | **ICT Projects** | 282d? | 2023-01-02 A | 2023-12-31 |  | 2% | 276.34d? | 0d |  |  |  | 9247.2h | 370.11h |  |  |  |
| 2 | 1.1 | **AMS Projects** | 100d? | 2023-02-01 A | 2023-05-31 |  | 11% | 89.15d? | 158d |  |  |  | 1999.2h | 3.39h |  |  |  |
| 3 | 1.1.1 | **Singapore-Inventory Module Implementation for Consumable Items** | 64.9d | 2023-02-01 A | 2023-04-20 |  | 16% | 54.54d | 193.1d |  |  | Tafsir | 519.2h |  | Singapore | 184879 |  |
| 4 | 1.1.1.1 | Requirements Gethering from the users | 15d | 2023-02-01 A | 2023-02-21 |  | 45% | 8.25d | 1d | 0d |  |  |  |  |  |  |  |
| 5 | 1.1.1.2 | System Setup | 8d | 2023-02-21 A | 2023-03-01 | 4 | 25% | 6d | 0d |  |  |  |  |  |  |  |  |
| 6 | 1.1.1.3 | Conference Room Pilot (CRP) | 8d | 2023-02-25 A | 2023-03-08 | 5 | 26% | 5.9d | 193.1d | 0d |  |  |  |  |  |  |  |
| 7 | 1.1.1.4 | Data Conversion | 4d | 2023-03-08 | 2023-03-13 | 6 |  |  | 193.1d | 0d |  |  |  |  |  |  |  |
| 8 | 1.1.1.5 | User Training | 4d | 2023-03-13 | 2023-03-17 | 7 |  |  | 193.1d | 0d |  |  |  |  |  |  |  |
| 9 | 1.1.1.6 | User Testing | 14d | 2023-03-17 | 2023-04-03 | 8 |  |  | 193.1d | 0d |  |  |  |  |  |  |  |
| 10 | 1.1.1.7 | Issues Resolution | 3d | 2023-04-03 | 2023-04-06 | 9 |  |  | 193.1d | 0d |  |  |  |  |  |  |  |
| 11 | 1.1.1.8 | Report Development | 8d | 2023-04-06 | 2023-04-16 | 10 |  |  | 193.1d | 0d |  |  |  |  |  |  |  |
| 12 | 1.1.1.9 | Move Setup to Live Environment | 2d | 2023-04-16 | 2023-04-18 | 11 |  |  | 193.1d | 0d |  |  |  |  |  |  |  |
| 13 | 1.1.1.10 | Go Live and Project Sign Off | 2d | 2023-04-18 | 2023-04-20 | 12 |  |  | 193.1d |  |  |  |  |  |  |  |  |
| 14 | 1.1.2 | **CEA Rewrite** | 96d | 2023-02-07 A | 2023-05-31 |  | 9% | 87.57d | 158d |  |  | Ervin Brosas | 1480h | 3.39h | Engineering | 110585 | HD #71718 |
| 15 | 1.1.2.1 | **Analysis Phase** | 6d | 2023-02-07 A | 2023-02-14 A |  | 100% |  |  |  |  |  |  |  |  |  |  |
| 16 | 1.1.2.1.1 | SRS Documentation | 6d | 2023-02-07 A | 2023-02-14 A |  | 100% |  |  |  | start no earlier than 2023-02-06 |  |  |  |  |  |  |
| 17 | 1.1.2.2 | Design Phase | 4d | 2023-02-15 A | 2023-02-20 A | 15 | 100% |  |  |  | finish no earlier than 2023-02-19 |  |  |  |  |  |  |
| 18 | 1.1.2.3 | Database Design | 3d | 2023-02-21 A | 2023-02-23 | 17 | 50% | 1.5d | 192d | 1d |  |  |  |  |  |  |  |
| 19 | 1.1.2.4 | **Coding** | 70d | 2023-02-26 | 2023-05-17 | 18 |  |  | 170d |  |  |  | 904h |  |  |  |  |
| 20 | 1.1.2.4.1 | **User Functions** | 53d | 2023-02-26 | 2023-04-27 |  |  |  | 187d |  |  | Ervin Brosas | 424h |  |  |  |  |
| 21 | 1.1.2.4.1.1 | Project Inquiry | 5d | 2023-02-26 | 2023-03-02 |  |  |  | 191d | 1d | start no earlier than 2023-02-26 |  |  |  |  |  |  |
| 22 | 1.1.2.4.1.2 | Project Details Management | 5d | 2023-03-05 | 2023-03-09 | 21 |  |  | 190d | 1d | start no earlier than 2023-03-05 |  |  |  |  |  |  |
| 23 | 1.1.2.4.1.3 | Requisition Inquiry | 5d | 2023-03-12 | 2023-03-16 | 22 |  |  | 189d | 1d | start no earlier than 2023-03-12 |  |  |  |  |  |  |
| 24 | 1.1.2.4.1.4 | Requisition Details | 6d | 2023-03-19 | 2023-03-24 | 23 |  |  | 188d | 0d | start no earlier than 2023-03-19 |  |  |  |  |  |  |
| 25 | 1.1.2.4.1.5 | Requisition Status View | 4d | 2023-03-26 | 2023-03-29 | 24 |  |  | 188d | 0d | finish no earlier than 2023-03-22 |  |  |  |  |  |  |
| 26 | 1.1.2.4.1.6 | Requisition Expenses View | 5d | 2023-03-30 | 2023-04-04 | 25 |  |  | 188d | 0d | finish no earlier than 2023-04-02 |  |  |  |  |  |  |
| 27 | 1.1.2.4.1.7 | Requisition Status Management | 5d | 2023-04-05 | 2023-04-10 | 26 |  |  | 188d | 0d | finish no earlier than 2023-04-09 |  |  |  |  |  |  |
| 28 | 1.1.2.4.1.8 | Employee Lookup | 5d | 2023-04-11 | 2023-04-16 | 27 |  |  | 188d | 0d | finish no earlier than 2023-04-16 |  |  |  |  |  |  |
| 29 | 1.1.2.4.1.9 | Equipment Lookup | 4d | 2023-04-17 | 2023-04-20 | 28 |  |  | 188d | 1d | finish no earlier than 2023-04-16 |  |  |  |  |  |  |
| 30 | 1.1.2.4.1.10 | Upload Attachment Management | 5d | 2023-04-23 | 2023-04-27 | 29 |  |  | 187d |  | start no earlier than 2023-04-23 |  |  |  |  |  |  |

| ID | WBS | Task | Duration | Start | Finish | Predecessors | Total slack | Free slack | Constraint | Resources | Work |
| --- | --- | --- | --- | --- | --- | --- | --- | --- | --- | --- | --- |
| 31 | 1.1.2.4.2 | **Report Functions** | 21d | 2023-02-26 | 2023-03-21 |  | 196d | 0d |  | Antony | 168h |
| 32 | 1.1.2.4.2.1 | **Detailed Expense Report** | 7d | 2023-02-26 | 2023-03-05 |  | 198d | 0d |  |  |  |
| 33 | 1.1.2.4.2.1.1 | Inquiry Form | 4d | 2023-02-26 | 2023-03-01 |  | 198d | 0d | start no earlier than 2023-02-26 |  |  |
| 34 | 1.1.2.4.2.1.2 | Report Document | 3d | 2023-03-02 | 2023-03-05 | 33 | 198d |  | finish no earlier than 2023-03-05 |  |  |
| 35 | 1.1.2.4.2.2 | **Expenses Report Summary** | 7d | 2023-03-06 | 2023-03-13 | 32 | 197d | 1d |  |  |  |
| 36 | 1.1.2.4.2.2.1 | Inquiry Form | 4d | 2023-03-06 | 2023-03-09 |  | 198d | 1d | start no earlier than 2023-03-05 |  |  |
| 37 | 1.1.2.4.2.2.2 | Report Document | 2d | 2023-03-12 | 2023-03-13 | 36 | 197d |  | start no earlier than 2023-03-12 |  |  |
| 38 | 1.1.2.4.2.3 | **Requisition Report** | 6d | 2023-03-15 | 2023-03-21 | 35 | 196d |  |  |  |  |
| 39 | 1.1.2.4.2.3.1 | Inquiry Form | 4d | 2023-03-15 | 2023-03-19 |  | 196d | 0d | finish no earlier than 2023-03-19 |  |  |
| 40 | 1.1.2.4.2.3.2 | Report Document | 2d | 2023-03-20 | 2023-03-21 | 39 | 196d |  | start no earlier than 2023-03-19 |  |  |
| 41 | 1.1.2.4.3 | **Administrative Functions** | 23d | 2023-03-22 | 2023-04-17 | 31 | 196d |  |  | Antony | 184h |
| 42 | 1.1.2.4.3.1 | Requisition Posting | 6d | 2023-03-22 | 2023-03-28 |  | 196d | 0d | start no earlier than 2023-03-15 |  |  |
| 43 | 1.1.2.4.3.2 | Equipment Number Assignment | 5d | 2023-03-29 | 2023-04-03 | 42 | 196d | 0d | finish no earlier than 2023-04-02 |  |  |
| 44 | 1.1.2.4.3.3 | Upload Project Setup | 6d | 2023-04-04 | 2023-04-10 | 43 | 196d | 0d | start no earlier than 2023-04-03 |  |  |
| 45 | 1.1.2.4.3.4 | CEA Closure | 6d | 2023-04-11 | 2023-04-17 | 44 | 196d |  |  |  |  |
| 46 | 1.1.2.4.4 | **Workflow Implementation** | 16d | 2023-04-30 | 2023-05-17 |  | 170d |  |  | Ervin Brosas | 128h |
| 47 | 1.1.2.4.4.1 | CEA Requsition Approval Cycle | 8d | 2023-04-30 | 2023-05-08 |  | 170d | 0d | start no earlier than 2023-04-30 |  |  |
| 48 | 1.1.2.4.4.2 | Automation of Assets Acquisition in JDE | 8d | 2023-05-09 | 2023-05-17 | 47 | 170d |  |  |  |  |
| 49 | 1.1.2.5 | **Testing Phase** | 8d | 2023-05-02 | 2023-05-10 |  |  |  |  |  |  |
| 50 | 1.1.2.5.1 | Functional Test | 3d | 2023-05-18 | 2023-05-21 |  | 163d | 0d | start no earlier than 2023-05-18 |  |  |
| 51 | 1.1.2.5.2 | Load Test | 2d | 2023-05-22 | 2023-05-23 | 50 | 163d | 0d | start no earlier than 2023-05-07 |  |  |
| 52 | 1.1.2.5.3 | System Test | 2d | 2023-05-24 | 2023-05-25 | 51 | 163d |  | start no earlier than 2023-05-02 |  |  |
| 53 | 1.1.2.6 | Documentation | 3d | 2023-05-28 | 2023-05-30 | 49 | 158d | 0d | start no earlier than 2023-05-28 |  |  |
| 54 | 1.1.2.7 | Deployment & User Acceptance | 1d | 2023-05-31 | 2023-05-31 | 53 | 158d |  |  |  |  |

| ID | WBS | Task | Type | Duration | Start | Finish | Predecessors | Total slack | Free slack | Constraint |
| --- | --- | --- | --- | --- | --- | --- | --- | --- | --- | --- |
| 55 | 1.1.3 | **Service Desk Implementation** |  | 1d? | 2023-02-01 | 2023-02-01 |  |  |  |  |
| 56 | 1.1.3.1 | R&D | manual | 1d? | 2023-02-01 | 2023-02-01 |  |  |  |  |
| 57 | 1.1.3.2 | Analysis Phase | manual | 1d? | 2023-02-01 | 2023-02-01 |  |  |  |  |
| 58 | 1.1.3.3 | Design Phase | manual | 1d? | 2023-02-01 | 2023-02-01 |  |  |  |  |
| 59 | 1.1.3.4 | Development Phase | manual | 1d? | 2023-02-01 | 2023-02-01 |  |  |  |  |
| 60 | 1.1.3.5 | Testing Phase | manual | 1d? | 2023-02-01 | 2023-02-01 |  |  |  |  |
| 61 | 1.1.3.6 | Documentation | manual | 1d? | 2023-02-01 | 2023-02-01 |  |  |  |  |
| 62 | 1.1.3.7 | Deployment & User Acceptance | manual | 1d? | 2023-02-01 | 2023-02-01 |  |  |  |  |
| 63 | 1.2 | **PMS Projects** |  | 282d? | 2023-01-02 | 2023-12-31 |  | 0d |  |  |
| 64 | 1.2.1 | **Resolution project for SRC length limitation** |  | 282d? | 2023-01-02 | 2023-12-31 |  | 0d |  |  |
| 65 | 1.2.1.1 | AD |  | 22d? | 2023-01-02 | 2023-01-29 |  | 218d | 2d | start no earlier than 2023-01-02 |
| 66 | 1.2.1.2 | CAT |  | 42d? | 2023-02-01 | 2023-03-24 | 65 | 216d |  | start no earlier than 2023-02-01 |
| 67 | 1.2.1.3 | UT/IT |  | 65d? | 2023-04-12 | 2023-06-29 |  | 136d |  | finish no earlier than 2023-06-29 |
| 68 | 1.2.1.4 | UAT - Test Environment |  | 64d? | 2023-07-05 | 2023-09-28 |  | 68d |  | finish no earlier than 2023-09-28 |
| 69 | 1.2.1.5 | UAT/GoLive - Production Environment |  | 67d? | 2023-10-01 | 2023-12-31 |  | 0d |  | finish no earlier than 2023-12-31 |
| 70 | 1.2.2 | **AF#2, SFDC+HMI Integration** |  | 61d? | 2023-01-15 | 2023-03-30 |  | 211d |  |  |
| 71 | 1.2.2.1 | AD |  | 10d? | 2023-01-15 | 2023-01-26 |  | 262d |  | finish no earlier than 2023-01-26 |
| 72 | 1.2.2.2 | CAT |  | 23d? | 2023-01-30 | 2023-02-28 |  | 225d | 0d | finish no earlier than 2023-02-28 |
| 73 | 1.2.2.3 | UT/IT |  | 12d? | 2023-03-01 | 2023-03-14 | 72 | 225d |  | start no earlier than 2023-03-01 |
| 74 | 1.2.2.4 | UAT |  | 10d? | 2023-03-20 | 2023-03-30 |  | 211d |  | finish no earlier than 2023-03-30 |
| 75 | 1.2.3 | **SFDC for Continuous Caster #1** |  | 139d? | 2023-04-05 | 2023-09-28 |  | 68d |  |  |
| 76 | 1.2.3.1 | AD |  | 20d? | 2023-04-05 | 2023-04-27 |  | 187d |  | finish no earlier than 2023-04-27 |
| 77 | 1.2.3.2 | CAT |  | 70d? | 2023-05-07 | 2023-08-03 |  | 110d |  | finish no earlier than 2023-08-03 |
| 78 | 1.2.3.3 | UT/IT |  | 20d? | 2023-08-06 | 2023-08-31 |  | 89d |  | finish no earlier than 2023-08-31 |
| 79 | 1.2.3.4 | UAT |  | 20d? | 2023-09-03 | 2023-09-28 |  | 68d |  | finish no earlier than 2023-09-28 |

| ID | WBS | Task | Type | Duration | Start | Finish | Predecessors | Total slack | Free slack | Constraint |
| --- | --- | --- | --- | --- | --- | --- | --- | --- | --- | --- |
| 80 | 1.3 | **Database Projects** |  | 282d? | 2023-01-02 | 2023-12-31 |  |  |  |  |
| 81 | 1.3.1 | **Database Reporting Dashboard** |  | 52d? | 2023-04-02 | 2023-05-31 |  |  |  |  |
| 82 | 1.3.1.1 | Concurrent connected users |  | 3d? | 2023-04-02 | 2023-04-04 |  | 200d | 0d | finish no earlier than 2023-04-04 |
| 83 | 1.3.1.2 | Database runtime errors log |  | 4d? | 2023-04-05 | 2023-04-09 | 82 | 200d | 0d | finish no earlier than 2023-04-09 |
| 84 | 1.3.1.3 | Active user's list | manual | 3d | 2023-04-10 | 2023-04-12 | 83 |  |  | finish no earlier than 2023-04-12 |
| 85 | 1.3.1.4 | Backup Status |  | 4d? | 2023-04-13 | 2023-04-17 |  | 193d | 0d | finish no earlier than 2023-04-17 |
| 86 | 1.3.1.5 | Audit reports |  | 3d? | 2023-04-18 | 2023-04-20 | 85 | 193d |  | finish no earlier than 2023-04-20 |
| 87 | 1.3.1.6 | Plant database avalabiliry status |  | 4d? | 2023-04-30 | 2023-05-03 |  | 182d |  | finish no earlier than 2023-05-03 |
| 88 | 1.3.1.7 | New database objects list |  | 4d? | 2023-05-04 | 2023-05-08 |  | 178d |  | finish no earlier than 2023-05-08 |
| 89 | 1.3.1.8 | User permissions |  | 3d? | 2023-05-09 | 2023-05-11 |  | 175d |  | finish no earlier than 2023-05-11 |
| 90 | 1.3.1.9 | Patches installed |  | 2d? | 2023-05-14 | 2023-05-15 |  | 172d |  | finish no earlier than 2023-05-15 |
| 91 | 1.3.1.10 | Database scheduled Jobs failed |  | 2d? | 2023-05-16 | 2023-05-17 |  | 170d |  | finish no earlier than 2023-05-17 |
| 92 | 1.3.1.11 | Compare users permissions |  | 3d? | 2023-05-18 | 2023-05-21 |  | 167d |  | finish no earlier than 2023-05-21 |
| 93 | 1.3.1.12 | Locked sessions and objects |  | 2d? | 2023-05-23 | 2023-05-24 |  | 164d |  | start no earlier than 2023-05-23 |
| 94 | 1.3.1.13 | Current load on databases |  | 3d? | 2023-05-25 | 2023-05-28 |  | 161d |  | start no earlier than 2023-05-25 |
| 95 | 1.3.1.14 | Running queries on database |  | 2d? | 2023-05-30 | 2023-05-31 |  | 158d |  | start no earlier than 2023-05-30 |
| 96 | 1.3.2 | **Performance Enhancements** |  | 71d? | 2023-01-02 | 2023-03-30 |  |  |  |  |
| 97 | 1.3.2.1 | Data archieveing (MSSQL & Oralce) | manual | 5d | 2023-02-12 | 2023-02-16 |  |  |  | start no earlier than 2023-02-12 |
| 98 | 1.3.2.2 | Index analysis / Reorganize / Rebuild | manual | 3d | 2023-02-19 | 2023-02-21 |  |  |  | start no earlier than 2023-02-19 |
| 99 | 1.3.2.3 | Analyse and tune excessive CPU usage |  | 3d? | 2023-02-23 | 2023-02-26 |  | 239d |  | finish no earlier than 2023-02-26 |
| 100 | 1.3.2.4 | Reclaim unused space |  | 2d? | 2023-02-27 | 2023-02-28 |  | 237d |  | finish no earlier than 2023-02-28 |
| 101 | 1.3.2.5 | Minimizing the wait events |  | 8d? | 2023-03-01 | 2023-03-09 |  | 229d |  | finish no earlier than 2023-03-09 |
| 102 | 1.3.2.6 | Priodic Study of AWR and ASH reports |  | 70d? | 2023-01-03 | 2023-03-30 |  | 211d |  | finish no earlier than 2023-03-30 |
| 103 | 1.3.2.7 | Tune up long running queries |  | 15d? | 2023-03-12 | 2023-03-28 |  | 213d |  | finish no earlier than 2023-03-28 |

| ID | WBS | Task | Type | Duration | Start | Finish | Total slack | Constraint |
| --- | --- | --- | --- | --- | --- | --- | --- | --- |
| 104 | 1.3.3 | **SQL Server Upgrade to 2019** |  | 67d? | 2023-07-02 | 2023-09-28 |  |  |
| 105 | 1.3.3.1 | Upgrade development environment and test applications |  | 22d? | 2023-07-02 | 2023-07-31 | 113d | finish no earlier than 2023-07-31 |
| 106 | 1.3.3.2 | **Prepare the production environment** |  | 24d? | 2023-08-01 | 2023-08-31 |  |  |
| 107 | 1.3.3.2.1 | Install additional windows features |  | 2d? | 2023-08-01 | 2023-08-02 | 111d | finish no earlier than 2023-08-02 |
| 108 | 1.3.3.2.2 | Install SQL Server with required features |  | 3d? | 2023-08-03 | 2023-08-06 | 108d | finish no earlier than 2023-08-06 |
| 109 | 1.3.3.2.3 | Copy logins and databases |  | 1d? | 2023-08-07 | 2023-08-07 | 107d | finish no earlier than 2023-08-07 |
| 110 | 1.3.3.2.4 | Copy SQL server's scheduled jobs, window scheduled tasks and scripts |  | 1d? | 2023-08-08 | 2023-08-08 | 106d | finish no earlier than 2023-08-08 |
| 111 | 1.3.3.2.5 | Modify Oracle's databse links to point new server |  | 1d? | 2023-08-09 | 2023-08-09 | 105d | finish no earlier than 2023-08-09 |
| 112 | 1.3.3.2.6 | Copy and compare permissions for users |  | 1d? | 2023-08-10 | 2023-08-10 | 104d | finish no earlier than 2023-08-10 |
| 113 | 1.3.3.2.7 | Schedule backups through maintenance plans |  | 1d? | 2023-08-10 | 2023-08-10 | 104d | finish no earlier than 2023-08-10 |
| 114 | 1.3.3.2.8 | Throughly test database of application & administration tasks |  | 14d? | 2023-08-14 | 2023-08-31 | 89d | start no earlier than 2023-08-13 |
| 115 | 1.3.3.2.9 | Audit licence and features used |  | 1d? | 2023-08-14 | 2023-08-14 | 102d | finish no earlier than 2023-08-14 |
| 116 | 1.3.3.3 | **Prepare the standby environment** |  | 17d? | 2023-09-03 | 2023-09-25 |  |  |
| 117 | 1.3.3.3.1 | Standby server using AlwaysOn technology |  | 4d? | 2023-09-03 | 2023-09-06 | 84d | finish no earlier than 2023-09-06 |
| 118 | 1.3.3.3.2 | Windows failover cluster feature installation |  | 4d? | 2023-09-07 | 2023-09-12 | 80d | finish no earlier than 2023-09-12 |
| 119 | 1.3.3.3.3 | FCI configuration for AlwaysOn groups |  | 2d? | 2023-09-13 | 2023-09-14 | 78d | finish no earlier than 2023-09-14 |
| 120 | 1.3.3.3.4 | Change recovery mode for all database |  | 1d? | 2023-09-18 | 2023-09-18 | 76d | finish no earlier than 2023-09-18 |
| 121 | 1.3.3.3.5 | Enable AlwaysON on both nodes |  | 3d? | 2023-09-19 | 2023-09-21 | 73d | start no earlier than 2023-09-19 |
| 122 | 1.3.3.3.6 | AlwaysOn testing (Switch over / Fail over) |  | 1d? | 2023-09-25 | 2023-09-25 | 71d | finish no earlier than 2023-09-25 |
| 123 | 1.3.3.4 | **Go LIVE** |  | 4d? | 2023-09-25 | 2023-09-28 |  |  |
| 124 | 1.3.3.4.1 | Prepare live server and refresh standby | manual | 1d | 2023-09-25 | 2023-09-25 |  | start no earlier than 2023-09-25 |
| 125 | 1.3.3.4.2 | Prepare to do list and schedule go LIVE |  | 1d? | 2023-09-26 | 2023-09-26 | 70d | finish no earlier than 2023-09-26 |
| 126 | 1.3.3.4.3 | Post implementation verification list |  | 1d? | 2023-09-26 | 2023-09-26 | 70d | finish no earlier than 2023-09-26 |
| 127 | 1.3.3.4.4 | Determine the upgrade acceptace criteria |  | 1d? | 2023-09-26 | 2023-09-26 | 70d | finish no earlier than 2023-09-26 |
| 128 | 1.3.3.4.5 | Plan Go Live with minimize downtime |  | 1d? | 2023-09-27 | 2023-09-27 | 69d | finish no earlier than 2023-09-27 |
| 129 | 1.3.3.4.6 | GO LIVE |  | 1d? | 2023-09-28 | 2023-09-28 | 68d | start no earlier than 2023-09-28 |

| ID | WBS | Task | Duration | Start | Finish | Total slack | Constraint |
| --- | --- | --- | --- | --- | --- | --- | --- |
| 130 | 1.3.4 | **Failover / Switchover of Database** | 282d? | 2023-01-02 | 2023-12-31 |  |  |
| 131 | 1.3.4.1 | Q1 - Failover MSSQL Database | 2d? | 2023-03-08 | 2023-03-09 | 229d | finish no earlier than 2023-03-09 |
| 132 | 1.3.4.2 | Q2 - Switchover Oracle Database | 2d? | 2023-05-17 | 2023-05-18 | 169d | finish no earlier than 2023-05-18 |
| 133 | 1.3.4.3 | Q3 - Failover MSSQL Database | 2d? | 2023-09-13 | 2023-09-14 | 78d | finish no earlier than 2023-09-14 |
| 134 | 1.3.4.4 | Q4 - Switchover Oracle Database | 2d? | 2023-12-20 | 2023-12-21 | 7d | finish no earlier than 2023-12-21 |
| 135 | 1.3.5 | **Backup Management and Restoration Tests** | 282d? | 2023-01-02 | 2023-12-31 |  |  |
| 136 | 1.3.5.1 | **Phase 1 [Q2]** | 71d? | 2023-01-02 | 2023-03-30 |  |  |
| 137 | 1.3.5.1.1 | Daily monitoring of backup logs | 70d? | 2023-01-03 | 2023-03-30 | 211d | finish no earlier than 2023-03-30 |
| 138 | 1.3.5.1.2 | Restore and recover all mssql databases upto last transaction log | 1d? | 2023-02-15 | 2023-02-15 | 247d | start no earlier than 2023-02-15 |
| 139 | 1.3.5.1.3 | Restore and recover all databases uptp a given point in time | 1d? | 2023-02-22 | 2023-02-22 | 242d | start no earlier than 2023-02-22 |
| 140 | 1.3.5.2 | **Phase 2 [Q3]** | 74d? | 2023-04-02 | 2023-06-29 | 136d |  |
| 141 | 1.3.5.2.1 | Daily monitoring of backup logs | 74d? | 2023-04-02 | 2023-06-29 | 136d | finish no earlier than 2023-06-29 |
| 142 | 1.3.5.2.2 | Recover from missing SPFile | 1d? | 2023-04-10 | 2023-04-10 | 202d | start no earlier than 2023-04-10 |
| 143 | 1.3.5.2.3 | Recover from loss of single/all control file(s) | 2d? | 2023-04-25 | 2023-04-26 | 188d | finish no earlier than 2023-04-26 |
| 144 | 1.3.5.2.4 | Recover from the loss of system data file / tablespace | 3d? | 2023-05-15 | 2023-05-17 | 170d | finish no earlier than 2023-05-17 |
| 145 | 1.3.5.3 | **Phase 3 [Q4]** | 67d? | 2023-07-02 | 2023-09-28 |  |  |
| 146 | 1.3.5.3.1 | Daily monitoring of backup logs | 67d? | 2023-07-02 | 2023-09-28 | 68d | start no earlier than 2023-07-02 |
| 147 | 1.3.5.3.2 | Recover from the loss of user data file / tablespace | 3d? | 2023-07-04 | 2023-07-06 | 130d | finish no earlier than 2023-07-06 |
| 148 | 1.3.5.3.3 | Recovery from redo log file loss | 3d? | 2023-08-15 | 2023-08-17 | 99d | finish no earlier than 2023-08-17 |
| 149 | 1.3.5.3.4 | Restore entire database from RMAN backup | 3d? | 2023-09-11 | 2023-09-13 | 79d | finish no earlier than 2023-09-13 |
| 150 | 1.3.5.4 | **Phase 4 [Q4]** | 67d? | 2023-10-01 | 2023-12-31 |  |  |
| 151 | 1.3.5.4.1 | Daily monitoring of backup logs | 67d? | 2023-10-01 | 2023-12-31 | 0d | finish no earlier than 2023-12-31 |
| 152 | 1.3.5.4.2 | Recover table data from data dumps | 2d? | 2023-10-16 | 2023-10-17 | 54d | finish no earlier than 2023-10-17 |
| 153 | 1.3.5.4.3 | Recover old scripts from data dumps | 2d? | 2023-11-21 | 2023-11-22 | 28d | finish no earlier than 2023-11-22 |
| 154 | 1.3.5.4.4 | Recover entire schema from data dumps | 4d? | 2023-12-11 | 2023-12-14 | 12d | finish no earlier than 2023-12-14 |

| ID | WBS | Task | Duration | Start | Finish | Predecessors | Complete | Remaining | Total slack | Free slack | Constraint | Resources | Work | Actual work | Planned / Unplanned for 2022 |
| --- | --- | --- | --- | --- | --- | --- | --- | --- | --- | --- | --- | --- | --- | --- | --- |
| 155 | 1.4 | **Infrastructure Projects** | 97d | 2023-01-02 A | 2023-04-30 |  | 4% | 93.36d | 185d |  |  |  | 7248h | 366.72h |  |
| 156 | 1.4.1 | **Network seggregation - OT and IT (Firewall installation)** | 40d | 2023-03-01 | 2023-04-16 |  |  |  | 197d |  |  | Nagendra Seetharam; Rashed Waqar; Sreejith Krishnan | 3120h |  | Planned |
| 157 | 1.4.1.1 | Hot Mill and SHF | 10d | 2023-03-01 | 2023-03-12 |  |  |  | 197d | 0d | start no earlier than 2023-03-01 | Nagendra Seetharam [300%]; Rashed Waqar [300%]; Sreejith Krishnan [300%] | 720h |  | Planned |
| 158 | 1.4.1.2 | Cold Mills | 10d | 2023-03-13 | 2023-03-23 | 157 |  |  | 197d | 0d | start no earlier than 2021-03-22 | Nagendra Seetharam [300%]; Rashed Waqar [300%]; Sreejith Krishnan [300%] | 720h |  | Planned |
| 159 | 1.4.1.3 | Finishing | 10d | 2023-03-24 | 2023-04-04 | 158 |  |  | 197d | 0d |  | Nagendra Seetharam; Rashed Waqar; Sreejith Krishnan | 240h |  | Planned |
| 160 | 1.4.1.4 | Remelt | 10d | 2023-04-05 | 2023-04-16 | 159 |  |  | 197d |  |  | Nagendra Seetharam [200%]; Rashed Waqar [200%]; Sreejith Krishnan [200%] | 480h |  | Planned |
| 161 | 1.4.2 | **Network Switch replacement** | 22d | 2023-01-02 A | 2023-01-29 |  | 41% | 12.93d | 260d |  |  | Nagendra Seetharam; Rashed Waqar; Sreejith Krishnan | 1008h | 366.72h | Planned |
| 162 | 1.4.2.1 | Admin departments | 2d | 2023-01-02 A | 2023-01-03 |  | 40% | 1.2d | 14.2d | 14d | start no earlier than 2022-04-04 | Nagendra Seetharam [1500%]; Rashed Waqar [1500%]; Sreejith Krishnan [1500%] | 720h | 288h | Planned |
| 163 | 1.4.2.2 | Engineering department | 2d | 2023-01-22 A | 2023-01-24 | 162 | 10% | 1.8d | 0.3d | 0d | start no earlier than 2021-03-22 | Nagendra Seetharam; Rashed Waqar; Sreejith Krishnan | 48h | 4.8h | Planned |
| 164 | 1.4.2.3 | Plant area | 2d | 2023-01-25 A | 2023-01-26 | 163 | 15% | 1.7d | 262d |  |  | Nagendra Seetharam; Rashed Waqar; Sreejith Krishnan | 48h | 7.2h | Planned |
| 165 | 1.4.2.4 | Foil Mill Area | 2d | 2023-01-27 A | 2023-01-29 A | 164 | 100% |  |  |  |  | Nagendra Seetharam; Rashed Waqar; Sreejith Krishnan | 48h | 48h | Planned |
| 166 | 1.4.3 | **Network monitoring tool implementation** | 40d | 2023-03-15 | 2023-04-30 |  |  |  | 185d |  |  | Nagendra Seetharam; Rashed Waqar; Sreejith Krishnan | 3120h |  | Planned |
| 167 | 1.4.3.1 | Identify product | 10d | 2023-03-15 | 2023-03-26 |  |  |  | 185d | 0d | start no earlier than 2023-03-15 | Nagendra Seetharam [300%]; Rashed Waqar [300%]; Sreejith Krishnan [300%] | 720h |  | Planned |
| 168 | 1.4.3.2 | Perform POC | 10d | 2023-03-27 | 2023-04-06 | 167 |  |  | 185d | 0d | start no earlier than 2021-03-22 | Nagendra Seetharam [300%]; Rashed Waqar [300%]; Sreejith Krishnan [300%] | 720h |  | Planned |
| 169 | 1.4.3.3 | Create PR | 10d | 2023-04-07 | 2023-04-18 | 168 |  |  | 185d | 0d |  | Nagendra Seetharam; Rashed Waqar; Sreejith Krishnan | 240h |  | Planned |
| 170 | 1.4.3.4 | Install and implement | 10d | 2023-04-19 | 2023-04-30 | 169 |  |  | 185d |  |  | Nagendra Seetharam [200%]; Rashed Waqar [200%]; Sreejith Krishnan [200%] | 480h |  | Planned |
| 171 | 1.5 | **General Projects** | 1d? | 2023-01-23 | 2023-01-23 |  |  |  | 265d |  |  |  |  |  |  |
| 172 | 1.5.1 | **Disaster Recovery testing** | 1d? | 2023-01-23 | 2023-01-23 |  |  |  | 265d |  |  |  |  |  |  |
| 173 | 1.5.1.1 | **Perform recovery testing of AMS servers** | 1d? | 2023-01-23 | 2023-01-23 |  |  |  | 265d |  |  |  |  |  |  |
| 174 | 1.5.1.1.1 | SWITCHOVER (MS SQL Database) | 1d | 2023-01-23 | 2023-01-23 |  |  |  | 265d |  |  |  |  |  |  |
| 175 | 1.5.1.1.2 | SWITCHBACK (MS SQL Database) | 1d? | 2023-01-23 | 2023-01-23 |  |  |  | 265d |  |  |  |  |  |  |
| 176 | 1.5.1.2 | **Perform recovery testing of PMS servers** | 1d | 2023-01-23 | 2023-01-23 |  |  |  | 265d |  |  |  |  |  |  |
| 177 | 1.5.1.2.1 | SWITCHOVER (Oracle Database) | 1d | 2023-01-23 | 2023-01-23 |  |  |  | 265d |  |  |  |  |  |  |
| 178 | 1.5.1.2.2 | SWITCHBACK (Oracle Database) | 1d | 2023-01-23 | 2023-01-23 |  |  |  | 265d |  |  |  |  |  |  |
| 179 | 1.5.1.3 | Perform recovery testing of Infrastructure servers | 1d | 2023-01-23 | 2023-01-23 |  |  |  | 265d |  |  |  |  |  |  |

| ID | WBS | Task | Duration | Start | Finish | Total slack |
| --- | --- | --- | --- | --- | --- | --- |
| 180 | 1.5.2 | **Phishing Training implementation - KnowBe4** | 1d | 2023-01-23 | 2023-01-23 | 265d |
| 181 | 1.5.2.1 | Setup the Knowbe4 console with training modules | 1d | 2023-01-23 | 2023-01-23 | 265d |
| 182 | 1.5.2.2 | User training and implementation for training on Phishing | 1d | 2023-01-23 | 2023-01-23 | 265d |
| 183 | 1.6 | **Audit and Compliance** | 1d? | 2023-01-23 | 2023-01-23 | 265d |
| 184 | 1.6.1 | Implement recommendations of TUV | 1d? | 2023-01-23 | 2023-01-23 | 265d |
| 185 | 1.6.2 | Implement recommendations of DELLOITE | 1d? | 2023-01-23 | 2023-01-23 | 265d |
| 186 | 1.6.3 | Implement recommendations of KPMG | 1d? | 2023-01-23 | 2023-01-23 | 265d |
| 187 | 1.6.4 | Vulnerability and Penetration Testing | 1d? | 2023-01-23 | 2023-01-23 | 265d |
