# 2023%20Projects

Schedule from MS Project, 2023-01-01 to 2023-12-31, A marks actual dates.

## Calendars

- Standard: Mon-Fri 08:00-12:00, 13:00-17:00; Sat-Sun off. Exceptions (off unless hours are given): 2023-01-15 08:00-12:00, 13:00-17:00, 2023-01-29 08:00-12:00, 13:00-17:00, 2023-02-19 08:00-12:00, 13:00-17:00, 2023-03-05 08:00-12:00, 13:00-17:00, 2023-03-12 08:00-12:00, 13:00-17:00, 2023-03-19 08:00-12:00, 13:00-17:00, 2023-03-26 08:00-12:00, 13:00-17:00, 2023-04-02 08:00-12:00, 13:00-17:00, 2023-04-09 08:00-12:00, 13:00-17:00, 2023-04-16 08:00-12:00, 13:00-17:00, 2023-04-23 08:00-12:00, 13:00-17:00, 2023-04-30 08:00-12:00, 13:00-17:00, 2023-05-07 08:00-12:00, 13:00-17:00, 2023-05-14 08:00-12:00, 13:00-17:00, 2023-05-21 08:00-12:00, 13:00-17:00, 2023-05-28 08:00-12:00, 13:00-17:00, 2023-06-04 08:00-12:00, 13:00-17:00, 2023-07-02 08:00-12:00, 13:00-17:00, 2023-08-06 08:00-12:00, 13:00-17:00, 2023-09-03 08:00-12:00, 13:00-17:00, 2023-10-01 08:00-12:00, 13:00-17:00, 2023-12-31 08:00-12:00, 13:00-17:00.

## Resources

| Resource |
| --- |
| Nagendra Seetharam |
| Rashed Waqar |
| Sreejith Krishnan |
| Tafsir |
| Ervin Brosas |
| Antony |

## Schedule

| ID | WBS | Task | Duration | Start | Finish | Predecessors | Complete | Remaining | Actual start | Total slack | Free slack | Constraint | Resources | Work | Actual work | Department | Helpdesk# | Text21 |
| --- | --- | --- | --- | --- | --- | --- | --- | --- | --- | --- | --- | --- | --- | --- | --- | --- | --- | --- |
| 1 | 1 | **ICT Projects** | 282d? | 2023-01-01 A | 2023-12-31 |  | 1% | 279.52d? |  | 0d |  |  |  | 5976h | 242.91h |  |  |  |
| 2 | 1.1 | **AMS Projects** | 111d? | 2023-01-01 A | 2023-05-16 |  | 6% | 104.52d? |  | 171d |  |  |  | 1848h | 3.39h |  |  |  |
| 3 | 1.1.1 | **Singapore-Inventory Module Implementation for Consumable Items** | 70d | 2023-01-02 | 2023-03-29 |  | 14% | 59.95d | 2023-01-01 |  |  |  | Tafsir | 560h |  | Singapore |  |  |
| 4 | 1.1.1.1 | Requirements Gethering from the users | 15d | 2023-01-01 A | 2023-01-19 |  | 45% | 8.25d |  | 235d | 0d |  |  |  |  |  |  |  |
| 5 | 1.1.1.2 | System Setup | 4d | 2023-01-20 | 2023-01-25 | 4 |  |  |  | 234d | 0d |  |  |  |  |  |  |  |
| 6 | 1.1.1.3 | Conference Room Pilot (CRP) | 6d | 2023-01-26 | 2023-02-01 | 5 |  |  |  | 234d | 0d |  |  |  |  |  |  |  |
| 7 | 1.1.1.4 | Data Conversion | 3d | 2023-02-02 | 2023-02-06 | 6 |  |  |  | 234d | 0d |  |  |  |  |  |  |  |
| 8 | 1.1.1.5 | User Training | 2d | 2023-02-07 | 2023-02-08 | 7 |  |  |  | 234d | 0d |  |  |  |  |  |  |  |
| 9 | 1.1.1.6 | User Testing | 7d | 2023-02-09 | 2023-02-17 | 8 |  |  |  | 234d | 0d |  |  |  |  |  |  |  |
| 10 | 1.1.1.7 | Issues Resolution | 3d | 2023-02-19 | 2023-02-21 | 9 |  |  |  | 235d | 0d |  |  |  |  |  |  |  |
| 11 | 1.1.1.8 | Report Development | 5d | 2023-02-22 | 2023-02-28 | 10 |  |  |  | 235d | 0d |  |  |  |  |  |  |  |
| 12 | 1.1.1.9 | Move Setup to Live Environment | 1d | 2023-03-01 | 2023-03-01 | 11 |  |  |  | 235d | 0d |  |  |  |  |  |  |  |
| 13 | 1.1.1.10 | Go Live and Project Sign Off | 1d | 2023-03-02 | 2023-03-02 | 12 |  |  |  | 235d |  |  |  |  |  |  |  |  |
| 14 | 1.1.2 | **CEA Rewrite** | 83d | 2023-02-07 A | 2023-05-16 |  | 3% | 80.8d |  | 171d |  |  | Ervin Brosas | 1288h | 3.39h | Engineering | 110585 | HD #71718 |
| 15 | 1.1.2.1 | **Analysis Phase** | 6d | 2023-02-07 A | 2023-02-14 |  | 50% | 3d |  | 198d | 0d |  |  |  |  |  |  |  |
| 16 | 1.1.2.1.1 | SRS Documentation | 6d | 2023-02-07 A | 2023-02-14 |  | 50% | 3d |  | 198d |  | start no earlier than 2023-02-06 |  |  |  |  |  |  |
| 17 | 1.1.2.2 | Design Phase | 4d | 2023-02-15 | 2023-02-19 | 15 |  |  |  | 198d | 0d | finish no earlier than 2023-02-19 |  |  |  |  |  |  |
| 18 | 1.1.2.3 | Database Design | 3d | 2023-02-20 | 2023-02-22 | 17 |  |  |  | 198d | 0d |  |  |  |  |  |  |  |
| 19 | 1.1.2.4 | **Coding** | 47d | 2023-02-23 | 2023-04-19 | 18 |  |  |  | 194d |  |  |  | 640h |  |  |  |  |
| 20 | 1.1.2.4.1 | **User Functions** | 47d | 2023-02-23 | 2023-04-19 |  |  |  |  | 194d |  |  |  | 344h |  |  |  |  |
| 21 | 1.1.2.4.1.1 | Project Inquiry | 4d | 2023-02-23 | 2023-02-28 |  |  |  |  | 198d | 0d | start no earlier than 2023-02-23 | Ervin Brosas | 32h |  |  |  |  |
| 22 | 1.1.2.4.1.2 | Project Details Management | 4d | 2023-03-01 | 2023-03-05 | 21 |  |  |  | 198d | 0d | start no earlier than 2023-03-01 | Ervin Brosas | 32h |  |  |  |  |
| 23 | 1.1.2.4.1.3 | Requisition Inquiry | 4d | 2023-03-06 | 2023-03-09 | 22 |  |  |  | 198d | 1d | start no earlier than 2023-03-06 | Ervin Brosas | 32h |  |  |  |  |
| 24 | 1.1.2.4.1.4 | Requisition Entry | 5d | 2023-03-12 | 2023-03-16 | 23 |  |  |  | 197d | 1d | start no earlier than 2023-03-12 | Ervin Brosas | 40h |  |  |  |  |
| 25 | 1.1.2.4.1.5 | Requisition Status View | 4d | 2023-03-19 | 2023-03-22 | 24 |  |  |  | 196d | 1d | finish no earlier than 2023-03-22 | Ervin Brosas | 32h |  |  |  |  |
| 26 | 1.1.2.4.1.6 | Requisition Expenses View | 4d | 2023-03-24 | 2023-03-28 | 25 |  |  |  | 195d | 0d | finish no earlier than 2023-03-28 | Ervin Brosas | 32h |  |  |  |  |
| 27 | 1.1.2.4.1.7 | Requisition Status Management | 5d | 2023-03-29 | 2023-04-03 | 26 |  |  |  | 195d | 0d | finish no earlier than 2023-04-03 | Ervin Brosas | 40h |  |  |  |  |
| 28 | 1.1.2.4.1.8 | Employee Lookup | 5d | 2023-04-04 | 2023-04-09 | 27 |  |  |  | 195d | 0d | start no earlier than 2023-04-04 | Ervin Brosas | 40h |  |  |  |  |
| 29 | 1.1.2.4.1.9 | Equipment Lookup | 4d | 2023-04-10 | 2023-04-13 | 28 |  |  |  | 195d | 1d |  | Ervin Brosas | 32h |  |  |  |  |
| 30 | 1.1.2.4.1.10 | Upload Attachment Management | 4d | 2023-04-16 | 2023-04-19 | 29 |  |  |  | 194d |  | start no earlier than 2023-04-16 | Ervin Brosas | 32h |  |  |  |  |

| ID | WBS | Task | Type | Duration | Start | Finish | Predecessors | Total slack | Free slack | Constraint | Resources | Work |
| --- | --- | --- | --- | --- | --- | --- | --- | --- | --- | --- | --- | --- |
| 31 | 1.1.2.4.2 | **Report Functions** |  | 21d | 2023-02-23 | 2023-03-20 |  | 203d | 0d |  |  | 160h |
| 32 | 1.1.2.4.2.1 | **Detailed Expense Report** |  | 6d | 2023-02-23 | 2023-03-02 |  | 205d | 1d |  | Antony | 48h |
| 33 | 1.1.2.4.2.1.1 | Inquiry Form |  | 4d | 2023-02-23 | 2023-02-28 |  | 205d | 0d | start no earlier than 2023-02-12 |  |  |
| 34 | 1.1.2.4.2.1.2 | Report Document |  | 2d | 2023-03-01 | 2023-03-02 | 33 | 205d |  | start no earlier than 2023-02-28 |  |  |
| 35 | 1.1.2.4.2.2 | **Expenses Report Summary** |  | 7d | 2023-03-05 | 2023-03-12 | 32 | 204d | 0d |  | Antony | 56h |
| 36 | 1.1.2.4.2.2.1 | Inquiry Form |  | 4d | 2023-03-05 | 2023-03-08 |  | 204d | 0d | start no earlier than 2023-03-05 |  |  |
| 37 | 1.1.2.4.2.2.2 | Report Document |  | 3d | 2023-03-09 | 2023-03-12 | 36 | 204d |  | start no earlier than 2023-03-09 |  |  |
| 38 | 1.1.2.4.2.3 | **Requisition Report** |  | 7d | 2023-03-13 | 2023-03-20 | 35 | 203d |  |  | Antony | 56h |
| 39 | 1.1.2.4.2.3.1 | Inquiry Form |  | 4d | 2023-03-13 | 2023-03-16 |  | 204d | 1d | start no earlier than 2023-03-12 |  |  |
| 40 | 1.1.2.4.2.3.2 | Report Document |  | 2d | 2023-03-19 | 2023-03-20 | 39 | 203d |  | start no earlier than 2023-03-19 |  |  |
| 41 | 1.1.2.4.3 | **Administrative Functions** |  | 17d | 2023-03-21 | 2023-04-09 | 31 | 203d |  |  |  | 136h |
| 42 | 1.1.2.4.3.1 | Requisition Posting/Closure Management |  | 6d | 2023-03-21 | 2023-03-27 |  | 203d | 0d | start no earlier than 2023-03-15 | Antony | 48h |
| 43 | 1.1.2.4.3.2 | Equipment Number Assignment |  | 5d | 2023-03-28 | 2023-04-02 | 42 | 203d | 0d | finish no earlier than 2023-04-02 | Antony | 40h |
| 44 | 1.1.2.4.3.3 | Upload Project Setup |  | 6d | 2023-04-03 | 2023-04-09 | 43 | 203d |  | start no earlier than 2023-04-03 | Antony | 48h |
| 45 | 1.1.2.5 | Workflow Implementation |  | 9d | 2023-04-20 | 2023-04-30 |  | 185d |  | start no earlier than 2023-04-20 | Ervin Brosas | 72h |
| 46 | 1.1.2.6 | **Testing Phase** |  | 8d | 2023-05-02 | 2023-05-10 |  |  |  |  |  |  |
| 47 | 1.1.2.6.1 | Functional Test |  | 3d | 2023-05-02 | 2023-05-04 |  | 177d | 1d | start no earlier than 2023-05-02 |  |  |
| 48 | 1.1.2.6.2 | Load Test |  | 2d | 2023-05-07 | 2023-05-08 | 47 | 176d | 0d | start no earlier than 2023-05-07 |  |  |
| 49 | 1.1.2.6.3 | System Test |  | 2d | 2023-05-09 | 2023-05-10 | 48 | 176d |  | start no earlier than 2023-05-02 |  |  |
| 50 | 1.1.2.7 | Documentation |  | 4d | 2023-05-11 | 2023-05-15 | 46 | 171d | 0d | start no earlier than 2023-05-03 |  |  |
| 51 | 1.1.2.8 | Deployment & User Acceptance |  | 1d | 2023-05-16 | 2023-05-16 | 50 | 171d |  |  |  |  |
| 52 | 1.1.3 | **Service Desk Implementation** |  | 1d? | 2023-01-02 | 2023-01-02 |  |  |  |  |  |  |
| 53 | 1.1.3.1 | R&D | manual | 1d? | 2023-01-02 | 2023-01-02 |  |  |  |  |  |  |
| 54 | 1.1.3.2 | Analysis Phase | manual | 1d? | 2023-01-02 | 2023-01-02 |  |  |  |  |  |  |
| 55 | 1.1.3.3 | Design Phase | manual | 1d? | 2023-01-02 | 2023-01-02 |  |  |  |  |  |  |
| 56 | 1.1.3.4 | Development Phase | manual | 1d? | 2023-01-02 | 2023-01-02 |  |  |  |  |  |  |
| 57 | 1.1.3.5 | Testing Phase | manual | 1d? | 2023-01-02 | 2023-01-02 |  |  |  |  |  |  |
| 58 | 1.1.3.6 | Documentation | manual | 1d? | 2023-01-02 | 2023-01-02 |  |  |  |  |  |  |
| 59 | 1.1.3.7 | Deployment & User Acceptance | manual | 1d? | 2023-01-02 | 2023-01-02 |  |  |  |  |  |  |

| ID | WBS | Task | Type | Duration | Start | Finish | Predecessors | Total slack | Free slack | Constraint |
| --- | --- | --- | --- | --- | --- | --- | --- | --- | --- | --- |
| 60 | 1.2 | **PMS Projects** |  | 282d? | 2023-01-02 | 2023-12-31 |  | 0d |  |  |
| 61 | 1.2.1 | **Resolution project for SRC length limitation** |  | 282d? | 2023-01-02 | 2023-12-31 |  | 0d |  |  |
| 62 | 1.2.1.1 | AD |  | 22d? | 2023-01-02 | 2023-01-29 |  | 218d | 2d | start no earlier than 2023-01-02 |
| 63 | 1.2.1.2 | CAT |  | 42d? | 2023-02-01 | 2023-03-24 | 62 | 216d |  | start no earlier than 2023-02-01 |
| 64 | 1.2.1.3 | UT/IT |  | 65d? | 2023-04-12 | 2023-06-29 |  | 136d |  | finish no earlier than 2023-06-29 |
| 65 | 1.2.1.4 | UAT - Test Environment |  | 64d? | 2023-07-05 | 2023-09-28 |  | 68d |  | finish no earlier than 2023-09-28 |
| 66 | 1.2.1.5 | UAT/GoLive - Production Environment |  | 67d? | 2023-10-01 | 2023-12-31 |  | 0d |  | finish no earlier than 2023-12-31 |
| 67 | 1.2.2 | **AF#2, SFDC+HMI Integration** |  | 61d? | 2023-01-15 | 2023-03-30 |  | 211d |  |  |
| 68 | 1.2.2.1 | AD |  | 10d? | 2023-01-15 | 2023-01-26 |  | 262d |  | finish no earlier than 2023-01-26 |
| 69 | 1.2.2.2 | CAT |  | 23d? | 2023-01-30 | 2023-02-28 |  | 225d | 0d | finish no earlier than 2023-02-28 |
| 70 | 1.2.2.3 | UT/IT |  | 12d? | 2023-03-01 | 2023-03-14 | 69 | 225d |  | start no earlier than 2023-03-01 |
| 71 | 1.2.2.4 | UAT |  | 10d? | 2023-03-20 | 2023-03-30 |  | 211d |  | finish no earlier than 2023-03-30 |
| 72 | 1.2.3 | **SFDC for Continuous Caster #1** |  | 139d? | 2023-04-05 | 2023-09-28 |  | 68d |  |  |
| 73 | 1.2.3.1 | AD |  | 20d? | 2023-04-05 | 2023-04-27 |  | 187d |  | finish no earlier than 2023-04-27 |
| 74 | 1.2.3.2 | CAT |  | 70d? | 2023-05-07 | 2023-08-03 |  | 110d |  | finish no earlier than 2023-08-03 |
| 75 | 1.2.3.3 | UT/IT |  | 20d? | 2023-08-06 | 2023-08-31 |  | 89d |  | finish no earlier than 2023-08-31 |
| 76 | 1.2.3.4 | UAT |  | 20d? | 2023-09-03 | 2023-09-28 |  | 68d |  | finish no earlier than 2023-09-28 |
| 77 | 1.3 | **Database Projects** |  | 282d | 2023-01-02 | 2023-12-31 |  |  |  |  |
| 78 | 1.3.1 | **Database Reporting Dashboard** |  | 52d | 2023-04-02 | 2023-05-31 |  |  |  |  |
| 79 | 1.3.1.1 | Concurrent connected users |  | 3d? | 2023-04-02 | 2023-04-04 |  | 200d | 0d | finish no earlier than 2023-04-04 |
| 80 | 1.3.1.2 | Database runtime errors log |  | 4d? | 2023-04-05 | 2023-04-09 | 79 | 200d | 0d | finish no earlier than 2023-04-09 |
| 81 | 1.3.1.3 | Active user's list | manual | 3d | 2023-04-10 | 2023-04-12 | 80 |  |  | finish no earlier than 2023-04-12 |
| 82 | 1.3.1.4 | Backup Status |  | 4d? | 2023-04-13 | 2023-04-17 |  | 193d | 0d | finish no earlier than 2023-04-17 |
| 83 | 1.3.1.5 | Audit reports |  | 3d? | 2023-04-18 | 2023-04-20 | 82 | 193d |  | finish no earlier than 2023-04-20 |
| 84 | 1.3.1.6 | Plant database avalabiliry status |  | 4d? | 2023-04-30 | 2023-05-03 |  | 182d |  | finish no earlier than 2023-05-03 |
| 85 | 1.3.1.7 | New database objects list |  | 4d? | 2023-05-04 | 2023-05-08 |  | 178d |  | finish no earlier than 2023-05-08 |
| 86 | 1.3.1.8 | User permissions |  | 3d? | 2023-05-09 | 2023-05-11 |  | 175d |  | finish no earlier than 2023-05-11 |
| 87 | 1.3.1.9 | Patches installed |  | 2d? | 2023-05-14 | 2023-05-15 |  | 172d |  | finish no earlier than 2023-05-15 |
| 88 | 1.3.1.10 | Database scheduled Jobs failed |  | 2d? | 2023-05-16 | 2023-05-17 |  | 170d |  | finish no earlier than 2023-05-17 |
| 89 | 1.3.1.11 | Compare users permissions |  | 3d? | 2023-05-18 | 2023-05-21 |  | 167d |  | finish no earlier than 2023-05-21 |
| 90 | 1.3.1.12 | Locked sessions and objects |  | 2d? | 2023-05-23 | 2023-05-24 |  | 164d |  | start no earlier than 2023-05-23 |
| 91 | 1.3.1.13 | Current load on databases |  | 3d? | 2023-05-25 | 2023-05-28 |  | 161d |  | start no earlier than 2023-05-25 |
| 92 | 1.3.1.14 | Running queries on database |  | 2d? | 2023-05-30 | 2023-05-31 |  | 158d |  | start no earlier than 2023-05-30 |

| ID | WBS | Task | Type | Duration | Start | Finish | Total slack | Constraint |
| --- | --- | --- | --- | --- | --- | --- | --- | --- |
| 93 | 1.3.2 | **Performance Enhancements** |  | 71d | 2023-01-02 | 2023-03-30 |  |  |
| 94 | 1.3.2.1 | Data archieveing (MSSQL & Oralce) | manual | 5d | 2023-02-12 | 2023-02-16 |  | start no earlier than 2023-02-12 |
| 95 | 1.3.2.2 | Index analysis / Reorganize / Rebuild | manual | 3d | 2023-02-19 | 2023-02-21 |  | start no earlier than 2023-02-19 |
| 96 | 1.3.2.3 | Analyse and tune excessive CPU usage |  | 3d? | 2023-02-22 | 2023-02-26 | 239d | finish no earlier than 2023-02-26 |
| 97 | 1.3.2.4 | Reclaim unused space |  | 2d? | 2023-02-27 | 2023-02-28 | 237d | finish no earlier than 2023-02-28 |
| 98 | 1.3.2.5 | Minimizing the wait events |  | 8d? | 2023-03-01 | 2023-03-09 | 229d | finish no earlier than 2023-03-09 |
| 99 | 1.3.2.6 | Priodic Study of AWR and ASH reports |  | 70d? | 2023-01-03 | 2023-03-30 | 211d | finish no earlier than 2023-03-30 |
| 100 | 1.3.2.7 | Tune up long running queries |  | 15d? | 2023-03-12 | 2023-03-28 | 213d | finish no earlier than 2023-03-28 |
| 101 | 1.3.3 | **SQL Server Upgrade to 2019** |  | 67d | 2023-07-02 | 2023-09-28 |  |  |
| 102 | 1.3.3.1 | Upgrade development environment and test applications |  | 22d? | 2023-07-02 | 2023-07-31 | 113d | finish no earlier than 2023-07-31 |
| 103 | 1.3.3.2 | **Prepare the production environment** |  | 24d | 2023-08-01 | 2023-08-31 |  |  |
| 104 | 1.3.3.2.1 | Install additional windows features |  | 2d? | 2023-08-01 | 2023-08-02 | 111d | finish no earlier than 2023-08-02 |
| 105 | 1.3.3.2.2 | Install SQL Server with required features |  | 3d? | 2023-08-03 | 2023-08-06 | 108d | finish no earlier than 2023-08-06 |
| 106 | 1.3.3.2.3 | Copy logins and databases |  | 1d? | 2023-08-07 | 2023-08-07 | 107d | finish no earlier than 2023-08-07 |
| 107 | 1.3.3.2.4 | Copy SQL server's scheduled jobs, window scheduled tasks and scripts |  | 1d? | 2023-08-08 | 2023-08-08 | 106d | finish no earlier than 2023-08-08 |
| 108 | 1.3.3.2.5 | Modify Oracle's databse links to point new server |  | 1d? | 2023-08-09 | 2023-08-09 | 105d | finish no earlier than 2023-08-09 |
| 109 | 1.3.3.2.6 | Copy and compare permissions for users |  | 1d? | 2023-08-10 | 2023-08-10 | 104d | finish no earlier than 2023-08-10 |
| 110 | 1.3.3.2.7 | Schedule backups through maintenance plans |  | 1d? | 2023-08-10 | 2023-08-10 | 104d | finish no earlier than 2023-08-10 |
| 111 | 1.3.3.2.8 | Throughly test database of application & administration tasks |  | 14d? | 2023-08-14 | 2023-08-31 | 89d | start no earlier than 2023-08-13 |
| 112 | 1.3.3.2.9 | Audit licence and features used |  | 1d? | 2023-08-14 | 2023-08-14 | 102d | finish no earlier than 2023-08-14 |
| 113 | 1.3.3.3 | **Prepare the standby environment** |  | 17d | 2023-09-03 | 2023-09-25 |  |  |
| 114 | 1.3.3.3.1 | Standby server using AlwaysOn technology |  | 4d? | 2023-09-03 | 2023-09-06 | 84d | finish no earlier than 2023-09-06 |
| 115 | 1.3.3.3.2 | Windows failover cluster feature installation |  | 4d? | 2023-09-07 | 2023-09-12 | 80d | finish no earlier than 2023-09-12 |
| 116 | 1.3.3.3.3 | FCI configuration for AlwaysOn groups |  | 2d? | 2023-09-13 | 2023-09-14 | 78d | finish no earlier than 2023-09-14 |
| 117 | 1.3.3.3.4 | Change recovery mode for all database |  | 1d? | 2023-09-18 | 2023-09-18 | 76d | finish no earlier than 2023-09-18 |
| 118 | 1.3.3.3.5 | Enable AlwaysON on both nodes |  | 3d? | 2023-09-19 | 2023-09-21 | 73d | start no earlier than 2023-09-19 |
| 119 | 1.3.3.3.6 | AlwaysOn testing (Switch over / Fail over) |  | 1d? | 2023-09-25 | 2023-09-25 | 71d | finish no earlier than 2023-09-25 |

| ID | WBS | Task | Type | Duration | Start | Finish | Total slack | Constraint |
| --- | --- | --- | --- | --- | --- | --- | --- | --- |
| 120 | 1.3.3.4 | **Go LIVE** |  | 4d | 2023-09-25 | 2023-09-28 |  |  |
| 121 | 1.3.3.4.1 | Prepare live server and refresh standby | manual | 1d | 2023-09-25 | 2023-09-25 |  | start no earlier than 2023-09-25 |
| 122 | 1.3.3.4.2 | Prepare to do list and schedule go LIVE |  | 1d? | 2023-09-26 | 2023-09-26 | 70d | finish no earlier than 2023-09-26 |
| 123 | 1.3.3.4.3 | Post implementation verification list |  | 1d? | 2023-09-26 | 2023-09-26 | 70d | finish no earlier than 2023-09-26 |
| 124 | 1.3.3.4.4 | Determine the upgrade acceptace criteria |  | 1d? | 2023-09-26 | 2023-09-26 | 70d | finish no earlier than 2023-09-26 |
| 125 | 1.3.3.4.5 | Plan Go Live with minimize downtime |  | 1d? | 2023-09-27 | 2023-09-27 | 69d | finish no earlier than 2023-09-27 |
| 126 | 1.3.3.4.6 | GO LIVE |  | 1d? | 2023-09-28 | 2023-09-28 | 68d | start no earlier than 2023-09-28 |
| 127 | 1.3.4 | **Failover / Switchover of Database** |  | 282d | 2023-01-02 | 2023-12-31 |  |  |
| 128 | 1.3.4.1 | Q1 - Failover MSSQL Database |  | 2d? | 2023-03-08 | 2023-03-09 | 229d | finish no earlier than 2023-03-09 |
| 129 | 1.3.4.2 | Q2 - Switchover Oracle Database |  | 2d? | 2023-05-17 | 2023-05-18 | 169d | finish no earlier than 2023-05-18 |
| 130 | 1.3.4.3 | Q3 - Failover MSSQL Database |  | 2d? | 2023-09-13 | 2023-09-14 | 78d | finish no earlier than 2023-09-14 |
| 131 | 1.3.4.4 | Q4 - Switchover Oracle Database |  | 2d? | 2023-12-20 | 2023-12-21 | 7d | finish no earlier than 2023-12-21 |
| 132 | 1.3.5 | **Backup Management and Restoration Tests** |  | 282d | 2023-01-02 | 2023-12-31 |  |  |
| 133 | 1.3.5.1 | **Phase 1 [Q2]** |  | 71d | 2023-01-02 | 2023-03-30 |  |  |
| 134 | 1.3.5.1.1 | Daily monitoring of backup logs |  | 70d? | 2023-01-03 | 2023-03-30 | 211d | finish no earlier than 2023-03-30 |
| 135 | 1.3.5.1.2 | Restore and recover all mssql databases upto last transaction log |  | 1d? | 2023-02-15 | 2023-02-15 | 247d | start no earlier than 2023-02-15 |
| 136 | 1.3.5.1.3 | Restore and recover all databases uptp a given point in time |  | 1d? | 2023-02-22 | 2023-02-22 | 241d | start no earlier than 2023-02-22 |
| 137 | 1.3.5.2 | **Phase 2 [Q3]** |  | 74d? | 2023-04-02 | 2023-06-29 | 136d |  |
| 138 | 1.3.5.2.1 | Daily monitoring of backup logs |  | 74d? | 2023-04-02 | 2023-06-29 | 136d | finish no earlier than 2023-06-29 |
| 139 | 1.3.5.2.2 | Recover from missing SPFile |  | 1d? | 2023-04-10 | 2023-04-10 | 202d | start no earlier than 2023-04-10 |
| 140 | 1.3.5.2.3 | Recover from loss of single/all control file(s) |  | 2d? | 2023-04-25 | 2023-04-26 | 188d | finish no earlier than 2023-04-26 |
| 141 | 1.3.5.2.4 | Recover from the loss of system data file / tablespace |  | 3d? | 2023-05-15 | 2023-05-17 | 170d | finish no earlier than 2023-05-17 |
| 142 | 1.3.5.3 | **Phase 3 [Q4]** |  | 67d | 2023-07-02 | 2023-09-28 |  |  |
| 143 | 1.3.5.3.1 | Daily monitoring of backup logs |  | 67d? | 2023-07-02 | 2023-09-28 | 68d | start no earlier than 2023-07-02 |
| 144 | 1.3.5.3.2 | Recover from the loss of user data file / tablespace |  | 3d? | 2023-07-04 | 2023-07-06 | 130d | finish no earlier than 2023-07-06 |
| 145 | 1.3.5.3.3 | Recovery from redo log file loss |  | 3d? | 2023-08-15 | 2023-08-17 | 99d | finish no earlier than 2023-08-17 |
| 146 | 1.3.5.3.4 | Restore entire database from RMAN backup |  | 3d? | 2023-09-11 | 2023-09-13 | 79d | finish no earlier than 2023-09-13 |

| ID | WBS | Task | Duration | Start | Finish | Predecessors | Complete | Remaining | Total slack | Free slack | Constraint | Resources | Work | Actual work | Planned / Unplanned for 2022 |
| --- | --- | --- | --- | --- | --- | --- | --- | --- | --- | --- | --- | --- | --- | --- | --- |
| 147 | 1.3.5.4 | **Phase 4 [Q4]** | 67d | 2023-10-01 | 2023-12-31 |  |  |  |  |  |  |  |  |  |  |
| 148 | 1.3.5.4.1 | Daily monitoring of backup logs | 67d? | 2023-10-01 | 2023-12-31 |  |  |  | 0d |  | finish no earlier than 2023-12-31 |  |  |  |  |
| 149 | 1.3.5.4.2 | Recover table data from data dumps | 2d? | 2023-10-16 | 2023-10-17 |  |  |  | 54d |  | finish no earlier than 2023-10-17 |  |  |  |  |
| 150 | 1.3.5.4.3 | Recover old scripts from data dumps | 2d? | 2023-11-21 | 2023-11-22 |  |  |  | 28d |  | finish no earlier than 2023-11-22 |  |  |  |  |
| 151 | 1.3.5.4.4 | Recover entire schema from data dumps | 4d? | 2023-12-11 | 2023-12-14 |  |  |  | 12d |  | finish no earlier than 2023-12-14 |  |  |  |  |
| 152 | 1.4 | **Infrastructure Projects** | 85d | 2023-01-02 A | 2023-04-16 |  | 2% | 83.58d | 197d |  |  |  | 4128h | 239.52h |  |
| 153 | 1.4.1 | **Network seggregation - OT and IT (Firewall installation)** | 40d | 2023-03-01 | 2023-04-16 |  |  |  | 197d |  |  | Nagendra Seetharam; Rashed Waqar; Sreejith Krishnan | 3120h |  | Planned |
| 154 | 1.4.1.1 | Hot Mill and SHF | 10d | 2023-03-01 | 2023-03-12 |  |  |  | 197d | 0d | start no earlier than 2023-03-01 | Nagendra Seetharam [300%]; Rashed Waqar [300%]; Sreejith Krishnan [300%] | 720h |  | Planned |
| 155 | 1.4.1.2 | Cold Mills | 10d | 2023-03-13 | 2023-03-23 | 154 |  |  | 197d | 0d | start no earlier than 2021-03-22 | Nagendra Seetharam [300%]; Rashed Waqar [300%]; Sreejith Krishnan [300%] | 720h |  | Planned |
| 156 | 1.4.1.3 | Finishing | 10d | 2023-03-24 | 2023-04-04 | 155 |  |  | 197d | 0d |  | Nagendra Seetharam; Rashed Waqar; Sreejith Krishnan | 240h |  | Planned |
| 157 | 1.4.1.4 | Remelt | 10d | 2023-04-05 | 2023-04-16 | 156 |  |  | 197d |  |  | Nagendra Seetharam [200%]; Rashed Waqar [200%]; Sreejith Krishnan [200%] | 480h |  | Planned |
| 158 | 1.4.2 | **Network Switch replacement** | 22d | 2023-01-02 A | 2023-01-29 |  | 10% | 19.8d | 260d |  |  | Nagendra Seetharam; Rashed Waqar; Sreejith Krishnan | 1008h | 239.52h | Planned |
| 159 | 1.4.2.1 | Admin departments | 2d | 2023-01-02 A | 2023-01-03 |  | 30% | 1.4d | 14.2d | 14d | start no earlier than 2022-04-04 | Nagendra Seetharam [1500%]; Rashed Waqar [1500%]; Sreejith Krishnan [1500%] | 720h | 216h | Planned |
| 160 | 1.4.2.2 | Engineering department | 2d | 2023-01-22 A | 2023-01-24 | 159 | 10% | 1.8d | 260d | 0d | start no earlier than 2021-03-22 | Nagendra Seetharam; Rashed Waqar; Sreejith Krishnan | 48h | 4.8h | Planned |
| 161 | 1.4.2.3 | Plant area | 2d | 2023-01-25 | 2023-01-26 | 160 |  |  | 260d | 0d |  | Nagendra Seetharam; Rashed Waqar; Sreejith Krishnan | 48h |  | Planned |
| 162 | 1.4.2.4 | Foil Mill Area | 2d | 2023-01-27 | 2023-01-29 | 161 |  |  | 260d |  |  | Nagendra Seetharam; Rashed Waqar; Sreejith Krishnan | 48h |  | Planned |
| 163 | 1.5 | **General Projects** | 1d? | 2023-01-23 | 2023-01-23 |  |  |  | 265d |  |  |  |  |  |  |
| 164 | 1.5.1 | **Disaster Recovery testing** | 1d? | 2023-01-23 | 2023-01-23 |  |  |  | 265d |  |  |  |  |  |  |
| 165 | 1.5.1.1 | **Perform recovery testing of AMS servers** | 1d? | 2023-01-23 | 2023-01-23 |  |  |  | 265d |  |  |  |  |  |  |
| 166 | 1.5.1.1.1 | SWITCHOVER (MS SQL Database) | 1d | 2023-01-23 | 2023-01-23 |  |  |  | 265d |  |  |  |  |  |  |
| 167 | 1.5.1.1.2 | SWITCHBACK (MS SQL Database) | 1d? | 2023-01-23 | 2023-01-23 |  |  |  | 265d |  |  |  |  |  |  |
| 168 | 1.5.1.2 | **Perform recovery testing of PMS servers** | 1d | 2023-01-23 | 2023-01-23 |  |  |  | 265d |  |  |  |  |  |  |
| 169 | 1.5.1.2.1 | SWITCHOVER (Oracle Database) | 1d | 2023-01-23 | 2023-01-23 |  |  |  | 265d |  |  |  |  |  |  |
| 170 | 1.5.1.2.2 | SWITCHBACK (Oracle Database) | 1d | 2023-01-23 | 2023-01-23 |  |  |  | 265d |  |  |  |  |  |  |
| 171 | 1.5.1.3 | Perform recovery testing of Infrastructure servers | 1d | 2023-01-23 | 2023-01-23 |  |  |  | 265d |  |  |  |  |  |  |

| ID | WBS | Task | Duration | Start | Finish | Total slack |
| --- | --- | --- | --- | --- | --- | --- |
| 172 | 1.5.2 | **Phishing Training implementation - KnowBe4** | 1d | 2023-01-23 | 2023-01-23 | 265d |
| 173 | 1.5.2.1 | Setup the Knowbe4 console with training modules | 1d | 2023-01-23 | 2023-01-23 | 265d |
| 174 | 1.5.2.2 | User training and implementation for training on Phishing | 1d | 2023-01-23 | 2023-01-23 | 265d |
| 175 | 1.6 | **Audit and Compliance** | 1d? | 2023-01-23 | 2023-01-23 | 265d |
| 176 | 1.6.1 | Implement recommendations of TUV | 1d? | 2023-01-23 | 2023-01-23 | 265d |
| 177 | 1.6.2 | Implement recommendations of DELLOITE | 1d? | 2023-01-23 | 2023-01-23 | 265d |
| 178 | 1.6.3 | Implement recommendations of KPMG | 1d? | 2023-01-23 | 2023-01-23 | 265d |
| 179 | 1.6.4 | Vulnerability and Penetration Testing | 1d? | 2023-01-23 | 2023-01-23 | 265d |
