# e-Bidding Project Schedule

Schedule from MS Project, 2010-03-01 to 2010-08-16, A marks actual dates.
GARMCO

## Calendars

- Standard: Mon-Thu 08:00-12:00, 13:00-17:00; Fri-Sat off; Sun 08:00-12:00, 13:00-17:00. Exceptions (off unless hours are given): 2010-05-02.

## Resources

| Resource |
| --- |
| Noel |
| Hussain |
| Husni |
| Uly |

## Schedule

| ID | WBS | Task | Type | Duration | Start | Finish | Predecessors | Complete | Remaining | Baseline start | Baseline finish | Baseline duration | Total slack | Free slack | Constraint | Resources | Work | Actual work |
| --- | --- | --- | --- | --- | --- | --- | --- | --- | --- | --- | --- | --- | --- | --- | --- | --- | --- | --- |
| 1 | 1 | **e-Bidding Project Plan** |  | 119.5d | 2010-03-01 A | 2010-08-16 |  | 25% | 90.12d | 2010-03-01 | 2010-07-13 | 96d | 0d |  |  |  | 896h | 236h |
| 2 | 1.1 | Hosting Feasibility |  | 5d | 2010-03-01 | 2010-03-07 |  |  |  | 2010-03-01 | 2010-03-07 | 5d | 114.5d |  |  | Hussain | 40h |  |
| 3 | 1.2 | Analysis Phase |  | 3d | 2010-03-01 A | 2010-03-03 A |  | 100% |  | 2010-03-01 | 2010-03-03 | 3d |  |  |  | Noel | 24h | 24h |
| 4 | 1.3 | Design Phase |  | 5d | 2010-03-04 A | 2010-03-17 A | 3 | 100% |  | 2010-03-04 | 2010-03-10 | 5d |  |  |  | Noel | 40h | 40h |
| 5 | 1.4 | Database Design |  | 5d | 2010-03-18 A | 2010-03-28 A | 4 | 100% |  | 2010-03-11 | 2010-03-15 | 3d |  |  |  | Noel | 32h | 32h |
| 6 | 1.5 | **Coding** |  | 66.5d | 2010-03-29 A | 2010-06-30 | 5 | 24% | 50.46d | 2010-03-16 | 2010-05-27 | 52d | 0d |  |  |  | 760h | 140h |
| 7 | 1.5.1 | **Administration Application** |  | 34d | 2010-03-29 A | 2010-05-16 |  | 16% | 28.52d | 2010-03-16 | 2010-03-29 | 10d | 0d |  |  |  | 232h | 24h |
| 8 | 1.5.1.1 | Supplier List |  | 6d | 2010-03-29 A | 2010-04-07 |  | 33% | 4d | 2010-03-16 | 2010-03-18 | 3d | 4d | 0d | start no later than 2010-03-22 | Noel | 40h | 8h |
| 9 | 1.5.1.2 | Supplier Confirmation |  | 4d | 2010-04-08 | 2010-04-13 | 8 |  |  | 2010-03-21 | 2010-03-22 | 2d | 4d | 0d |  | Noel | 32h |  |
| 10 | 1.5.1.3 | Published RFQ |  | 6d | 2010-03-29 A | 2010-04-22 | 9 | 50% | 3d |  |  |  | 0d |  | start no later than 2010-03-29 | Noel | 40h | 16h |
| 11 | 1.5.1.4 | Create Bid Analysis for Un-Sealed RFQ |  | 15d | 2010-04-25 | 2010-05-16 | 10 |  |  | 2010-03-23 | 2010-03-29 | 5d | 0d |  |  | Noel | 120h |  |
| 12 | 1.5.1.5 | Administration Application Milestone | milestone | 0d | 2010-05-16 | 2010-05-16 | 11 |  |  | 2010-03-29 | 2010-03-29 | 0d | 0d |  |  | Noel |  |  |
| 13 | 1.5.2 | **Supplier Application** |  | 43.5d | 2010-04-04 A | 2010-06-03 | 7 | 58% | 18.07d | 2010-03-30 | 2010-04-29 | 23d | 0d |  |  |  | 224h | 116h |
| 14 | 1.5.2.1 | Home |  | 2.5d | 2010-04-04 A | 2010-05-18 |  | 40% | 1.5d | 2010-03-30 | 2010-03-31 | 2d | 0d |  |  | Noel | 16h | 4h |
| 15 | 1.5.2.2 | Login |  | 4d | 2010-04-04 A | 2010-05-20 | 14 | 50% | 2d | 2010-04-01 | 2010-04-05 | 3d | 0d |  |  | Noel | 24h | 8h |
| 16 | 1.5.2.3 | Registration |  | 6.5d | 2010-04-06 A | 2010-05-25 | 15 | 46% | 3.5d | 2010-04-06 | 2010-04-12 | 5d | 0d |  |  | Noel | 40h | 12h |
| 17 | 1.5.2.4 | Bids Inquiry |  | 9d | 2010-04-06 A | 2010-05-27 | 16 | 78% | 2d | 2010-04-13 | 2010-04-22 | 8d | 0d |  |  | Noel | 64h | 48h |
| 18 | 1.5.2.5 | Bid Form |  | 10.5d | 2010-04-19 A | 2010-06-03 | 17 | 57% | 4.5d | 2010-04-25 | 2010-04-29 | 5d | 0d |  |  | Noel | 80h | 44h |
| 19 | 1.5.2.6 | Supplier Application Milestone | milestone | 0d | 2010-06-03 | 2010-06-03 | 18 |  |  | 2010-04-29 | 2010-04-29 | 0d | 0d |  |  | Noel |  |  |
| 21 | 1.5.3 | Web Service |  | 12d | 2010-06-03 | 2010-06-21 | 13 |  |  | 2010-05-03 | 2010-05-18 | 12d | 0d |  |  | Noel | 96h |  |
| 23 | 1.5.4 | **Post Implementation** |  | 7d | 2010-06-21 | 2010-06-30 | 21 |  |  | 2010-05-19 | 2010-05-27 | 7d | 0d |  |  |  |  |  |
| 24 | 1.5.4.1 | Data Setup in EnterpriseOne |  | 2d | 2010-06-21 | 2010-06-23 |  |  |  | 2010-05-19 | 2010-05-20 | 2d | 0d |  |  |  |  |  |
| 25 | 1.5.4.2 | Create PO Workflow Process |  | 5d | 2010-06-23 | 2010-06-30 | 24 |  |  | 2010-05-23 | 2010-05-27 | 5d | 0d |  |  |  |  |  |
| 27 | 1.5.5 | **Others** |  | 39d | 2010-03-29 | 2010-05-23 | 5 |  |  | 2010-03-16 | 2010-03-30 | 11d | 27.5d |  |  |  | 208h |  |
| 28 | 1.5.5.1 | Legal Terms and Condition |  | 1d | 2010-03-29 | 2010-03-29 |  |  |  | 2010-03-16 | 2010-03-16 | 1d | 55.5d | 0d |  | Hussain | 8h |  |
| 29 | 1.5.5.2 | Enhancement of the Bid Analysis in E1 |  | 10d | 2010-03-30 | 2010-04-12 | 28 |  |  | 2010-03-17 | 2010-03-30 | 10d | 55.5d |  |  | Hussain | 80h |  |
| 30 | 1.5.5.3 | Publishing Order Quotations from JDE to e-Tendering System |  | 3d | 2010-05-16 | 2010-05-18 |  |  |  |  |  |  | 27.5d | 0d | start no earlier than 2010-05-16 | Husni | 24h |  |
| 31 | 1.5.5.4 | Cataloging the Master Table (Stock and Non-Stock) |  | 3d | 2010-05-19 | 2010-05-23 | 30 |  |  |  |  |  | 27.5d |  |  | Uly; Husni; Hussain; Noel | 96h |  |
| 33 | 1.5.6 | Coding Milestone | milestone | 0d | 2010-06-30 | 2010-06-30 | 23 |  |  | 2010-05-27 | 2010-05-27 | 0d | 0d |  |  |  |  |  |

Notes:
- 2: Feasibility study on hosting the application, internally or outside
- 3: enumerating possible concerns and issues during the development
- 4: Web layout and includes the master pages that will be used
- 9: This will approve new supplier who registered to the system
- 11: This will provide the supplier's delivery time as well. / Selecting and informing the winning bidder
- 15: This will also include the resetting of the password
- 16: Supplier will include preferrences, services and other info
- 17: Supplier will be able to view all participated RFQs and printing of PO
- 21: This Web Service will be responsible for pulling and pushing of data from/to the live database
- 28: Need to get the terms and condition in which all Suppliers must agree during registration in the system

| ID | WBS | Task | Type | Duration | Start | Finish | Predecessors | Complete | Baseline start | Baseline finish | Baseline duration | Total slack | Constraint | Resources | Work | Actual work |
| --- | --- | --- | --- | --- | --- | --- | --- | --- | --- | --- | --- | --- | --- | --- | --- | --- |
| 35 | 1.6 | **Testing Phase** |  | 13d | 2010-06-30 | 2010-07-19 | 6 |  | 2010-05-30 | 2010-06-15 | 13d | 0d |  |  |  |  |
| 36 | 1.6.1 | Functional Test |  | 7d | 2010-06-30 | 2010-07-11 |  |  | 2010-05-30 | 2010-06-07 | 7d | 0d |  |  |  |  |
| 37 | 1.6.2 | Load Test |  | 3d | 2010-07-11 | 2010-07-14 | 36 |  | 2010-06-08 | 2010-06-10 | 3d | 0d |  |  |  |  |
| 38 | 1.6.3 | System Test |  | 3d | 2010-07-14 | 2010-07-19 | 37 |  | 2010-06-13 | 2010-06-15 | 3d | 0d |  |  |  |  |
| 39 | 1.6.4 | Testing Phase Milestone | milestone | 0d | 2010-07-19 | 2010-07-19 | 38 |  | 2010-06-15 | 2010-06-15 | 0d | 0d |  |  |  |  |
| 41 | 1.7 | Documentation |  | 20d | 2010-07-19 | 2010-08-16 | 35 |  | 2010-06-16 | 2010-07-13 | 20d | 0d |  |  |  |  |
| 43 | 2 | **Other Tasks** |  | 38d | 2010-03-07 A | 2010-04-27 A |  | 100% |  |  |  |  |  |  | 88h | 88h |
| 44 | 2.1 | Enhancement Request for the Work Order (HD No. 14112) |  | 1d | 2010-03-07 A | 2010-03-07 A |  | 100% |  |  |  |  | start no earlier than 2010-03-08 | Noel | 8h | 8h |
| 45 | 2.2 | GARMCO Web File Sharing (HD No. 14151) |  | 3d | 2010-03-09 A | 2010-03-14 A |  | 100% |  |  |  |  | start no earlier than 2010-03-09 | Noel | 24h | 24h |
| 46 | 2.3 | Enhancement Request for the EPA (HD No. 14167) |  | 0.5d | 2010-03-18 A | 2010-03-18 A |  | 100% |  |  |  |  | start no earlier than 2010-03-18 | Noel | 4h | 4h |
| 47 | 2.4 | Enhancement Request for the Helpdesk System (HD No. 14125) |  | 2d | 2010-03-21 A | 2010-03-22 A |  | 100% |  |  |  |  | start no earlier than 2010-03-21 | Noel | 16h | 16h |
| 48 | 2.5 | Enhancement Request for Order Requisition (HD No. 14200) |  | 1h | 2010-03-24 A | 2010-03-24 A |  | 100% |  |  |  |  | start no earlier than 2010-03-24 | Noel | 1h | 1h |
| 49 | 2.6 | Enhancement Request for PAF Re-grading/Title Change (HD No. 14285) |  | 2h | 2010-03-24 A | 2010-03-24 A |  | 100% |  |  |  |  | start no earlier than 2010-03-24 | Noel | 2h | 2h |
| 50 | 2.7 | Enhancement Request for PAF, allowances (HD No. 14294) |  | 1h | 2010-03-24 A | 2010-03-24 A |  | 100% |  |  |  |  | start no earlier than 2010-03-24 | Noel | 1h | 1h |
| 51 | 2.8 | Enhancement and Incident Request for T&E (HD No. 14458 and 14456 respectively) |  | 1d | 2010-04-11 A | 2010-04-11 A |  | 100% |  |  |  |  | start no earlier than 2010-04-11 | Noel | 8h | 8h |
| 52 | 2.9 | Visited ASRY |  | 0.5d | 2010-04-20 A | 2010-04-20 A |  | 100% |  |  |  |  | start no earlier than 2010-04-20 | Noel; Hussain | 8h | 8h |
| 53 | 2.10 | Enhancement Request for PAF (HD No. 14537 and 14551) |  | 1d | 2010-04-22 A | 2010-04-22 A |  | 100% |  |  |  |  | finish no earlier than 2010-04-22 | Noel | 8h | 8h |
| 54 | 2.11 | Enhancement Request for T&E (HD No. 14576) |  | 1d | 2010-04-27 A | 2010-04-27 A |  | 100% |  |  |  |  | start no earlier than 2010-04-27 | Noel | 8h | 8h |

Notes:
- 36: Includes testing on different web browsers
- 45: DIL on 11 March 2010
